# 各种升级工作安排

Schedule from a web Gantt chart, 2024-12-18 to 2025-01-23.
Saturdays and Sundays are off

## Schedule

| ID | WBS | Task | Duration | Start | Finish | Predecessors | inPeople | Status |
| --- | --- | --- | --- | --- | --- | --- | --- | --- |
| 2 | 1 | **Zenith Magento 升级和迁移** | 24d | 2024-12-18 | 2025-01-20 |  |  |  |
| 3 | 1.1 | 后端开发 | 15d | 2024-12-18 | 2025-01-07 |  | 开发 1 |  |
| 4 | 1.2 | 生产 infra 准备、测试数据准备 | 5d | 2024-12-18 | 2024-12-24 |  | 架构 1 |  |
| 5 | 1.3 | 生产 ACK 部署 | 5d | 2024-12-25 | 2024-12-31 | 4 | 架构 1 | waiting |
| 6 | 1.4 | 开发配合全量测试 | 2d | 2025-01-08 | 2025-01-09 | 3 | 开发 1 | waiting |
| 7 | 1.5 | 生产环境临时域名下全量测试 | 3d | 2025-01-08 | 2025-01-10 | 3 | 测试 1 | waiting |
| 8 | 1.6 | 生产环境切换、回归等 | 1d | 2025-01-13 | 2025-01-13 | 7 | 架构 1、测试1、开发 1 | waiting |
| 9 | 1.7 | 测试环境迁移到 ACK | 3d | 2025-01-15 | 2025-01-17 |  | 架构 1 |  |
| 10 | 1.8 | 测试环境回归 | 1d | 2025-01-20 | 2025-01-20 | 9 | 测试 1 | waiting |
| 11 | 2 | **TagHeuer Magento 升级和迁移** | 27d | 2024-12-18 | 2025-01-23 |  |  |  |
| 12 | 2.1 | 后端开发 | 16d | 2024-12-18 | 2025-01-08 |  | 开发 2 |  |
| 13 | 2.2 | 生产 infra 准备、测试数据准备 | 5d | 2024-12-18 | 2024-12-24 |  | 架构 1 |  |
| 14 | 2.3 | 生产 ACK 部署 | 5d | 2025-01-01 | 2025-01-07 | 5 | 架构 1 | waiting |
| 15 | 2.4 | CI/CD配置 | 1d | 2025-01-08 | 2025-01-08 | 14 | 架构 1 | waiting |
| 16 | 2.5 | 开发配合全量测试 | 3d | 2025-01-09 | 2025-01-13 | 12 | 开发 2 | waiting |
| 17 | 2.6 | 生产环境临时域名下全量测试 | 5d | 2025-01-09 | 2025-01-15 | 12 | 测试 2 | waiting |
| 18 | 2.7 | 生产环境切换、回归等 | 1d | 2025-01-16 | 2025-01-16 | 17 | 架构 1、测试 2、开发 2 | waiting |
| 19 | 2.8 | 测试环境迁移到 ACK | 3d | 2025-01-20 | 2025-01-22 |  | 架构 1 |  |
| 20 | 2.9 | 测试环境回归 | 1d | 2025-01-23 | 2025-01-23 | 19 | 测试 1 | waiting |

Notes:
- 3: 开发一预计每天 6 小时
- 9: 测试环境最后做
- 12: 开发二预计每天 7 小时
- 19: 测试环境最后做
